# Primavera P6 export — Kinan Bay Residences — Baseline BL-02 — Data Date 01-May-27
Activity ID,Activity Name,WBS,Original Duration,Start,Finish,Total Float,Activity % Complete
KB-M-000,Notice to Proceed,KB.0,0,01-Feb-26,01-Feb-26,0,100%
KB-EN-010,"Site mobilisation & hoarding",KB.0.1,43,01-Feb-26,15-Mar-26,0,100%
T1-SUB-10,"Bay Tower 1 — piling, excavation & raft",KB.1.1,184,01-Mar-26,31-Aug-26,12,100%
T1-STR-20,"Bay Tower 1 — superstructure L1–L34",KB.1.2,410,01-Sep-26,15-Oct-27,12,59%
T1-FAC-30,"Bay Tower 1 — unitised curtain wall",KB.1.3,337,01-Mar-27,31-Jan-28,12,18%
T1-FIT-40,"Bay Tower 1 — MEP, fit-out & finishes",KB.1.4,458,01-Jun-27,31-Aug-28,12,0%
T1-HO-50,"Bay Tower 1 — testing, commissioning & handover",KB.1.5,91,01-Sep-28,30-Nov-28,12,0%
T2-SUB-10,"Bay Tower 2 — piling, excavation & raft",KB.2.1,168,01-Apr-26,15-Sep-26,13,100%
T2-STR-20,"Bay Tower 2 — superstructure L1–L28",KB.2.2,350,16-Sep-26,31-Aug-27,13,65%
T2-FAC-30,"Bay Tower 2 — unitised curtain wall",KB.2.3,318,01-Feb-27,15-Dec-27,13,28%
T2-FIT-40,"Bay Tower 2 — MEP, fit-out & finishes",KB.2.4,427,01-May-27,30-Jun-28,13,0%
T2-HO-50,"Bay Tower 2 — testing, commissioning & handover",KB.2.5,92,01-Jul-28,30-Sep-28,13,0%
H1-SUB-10,"Waterfront Hotel — piling, excavation & raft",KB.3.1,183,01-Jun-26,30-Nov-26,14,100%
H1-STR-20,"Waterfront Hotel — superstructure L1–L16",KB.3.2,304,01-Dec-26,30-Sep-27,0,50%
H1-FAC-30,"Waterfront Hotel — unitised curtain wall",KB.3.3,304,01-May-27,28-Feb-28,14,0%
H1-FIT-40,"Waterfront Hotel — MEP, fit-out & finishes",KB.3.4,488,01-Aug-27,30-Nov-28,14,0%
H1-HO-50,"Waterfront Hotel — testing, commissioning & handover",KB.3.5,90,01-Dec-28,28-Feb-29,14,0%
P1-SUB-10,"Bay Retail Podium — piling, excavation & raft",KB.4.1,200,15-Mar-26,30-Sep-26,15,100%
P1-STR-20,"Bay Retail Podium — superstructure L1–L3",KB.4.2,212,01-Oct-26,30-Apr-27,15,100%
P1-FAC-30,"Bay Retail Podium — cladding & glazing",KB.4.3,245,01-Mar-27,31-Oct-27,15,25%
P1-FIT-40,"Bay Retail Podium — MEP, fit-out & finishes",KB.4.4,488,01-Jun-27,30-Sep-28,15,0%
P1-HO-50,"Bay Retail Podium — testing, commissioning & handover",KB.4.5,92,01-Oct-28,31-Dec-28,15,0%
MS-SUB-10,"Multi-Storey Car Park — piling, excavation & raft",KB.5.1,106,01-Sep-26,15-Dec-26,16,100%
MS-STR-20,"Multi-Storey Car Park — superstructure L1–L6",KB.5.2,197,16-Dec-26,30-Jun-27,16,69%
MS-FAC-30,"Multi-Storey Car Park — cladding & glazing",KB.5.3,153,01-May-27,30-Sep-27,16,0%
MS-FIT-40,"Multi-Storey Car Park — MEP, fit-out & finishes",KB.5.4,153,01-Aug-27,31-Dec-27,16,0%
MS-HO-50,"Multi-Storey Car Park — testing, commissioning & handover",KB.5.5,31,01-Jan-28,31-Jan-28,16,0%
SC-SUB-10,"Community School — piling, excavation & raft",KB.6.1,90,01-Jan-27,31-Mar-27,17,100%
SC-STR-20,"Community School — superstructure L1–L3",KB.6.2,183,01-Apr-27,30-Sep-27,17,16%
SC-FAC-30,"Community School — cladding & glazing",KB.6.3,153,01-Aug-27,31-Dec-27,17,0%
SC-FIT-40,"Community School — MEP, fit-out & finishes",KB.6.4,213,01-Nov-27,31-May-28,17,0%
SC-HO-50,"Community School — testing, commissioning & handover",KB.6.5,61,01-Jun-28,31-Jul-28,17,0%
MQ-SUB-10,"Bay Mosque — piling, excavation & raft",KB.7.1,74,01-Feb-27,15-Apr-27,18,100%
MQ-STR-20,"Bay Mosque — superstructure frame & dome",KB.7.2,199,16-Apr-27,31-Oct-27,18,8%
MQ-FAC-30,"Bay Mosque — cladding & glazing",KB.7.3,153,01-Sep-27,31-Jan-28,18,0%
MQ-FIT-40,"Bay Mosque — MEP, fit-out & finishes",KB.7.4,183,01-Dec-27,31-May-28,18,0%
MQ-HO-50,"Bay Mosque — testing, commissioning & handover",KB.7.5,45,01-Jun-28,15-Jul-28,18,0%
UT-SUB-10,"Substation & Utility Building — piling, excavation & raft",KB.8.1,61,01-Nov-26,31-Dec-26,19,100%
UT-STR-20,"Substation & Utility Building — superstructure frame & dome",KB.8.2,90,01-Jan-27,31-Mar-27,19,100%
UT-FAC-30,"Substation & Utility Building — cladding & glazing",KB.8.3,92,01-Mar-27,31-May-27,19,67%
UT-FIT-40,"Substation & Utility Building — MEP, fit-out & finishes",KB.8.4,153,01-Apr-27,31-Aug-27,19,20%
UT-HO-50,"Substation & Utility Building — testing, commissioning & handover",KB.8.5,15,01-Sep-27,15-Sep-27,19,0%
TH01-SUB-10,"Townhouse 1 — piling, excavation & raft",KB.9.1,31,01-Dec-26,31-Dec-26,20,100%
TH01-STR-20,"Townhouse 1 — superstructure L1–L3",KB.9.2,75,01-Jan-27,16-Mar-27,20,100%
TH01-FAC-30,"Townhouse 1 — cladding & glazing",KB.9.3,46,01-Mar-27,15-Apr-27,20,100%
TH01-FIT-40,"Townhouse 1 — MEP, fit-out & finishes",KB.9.4,91,31-Mar-27,29-Jun-27,20,34%
TH01-HO-50,"Townhouse 1 — testing, commissioning & handover",KB.9.5,20,30-Jun-27,19-Jul-27,20,0%
TH02-SUB-10,"Townhouse 2 — piling, excavation & raft",KB.10.1,31,22-Dec-26,21-Jan-27,21,100%
TH02-STR-20,"Townhouse 2 — superstructure L1–L3",KB.10.2,75,22-Jan-27,06-Apr-27,21,100%
TH02-FAC-30,"Townhouse 2 — cladding & glazing",KB.10.3,46,22-Mar-27,06-May-27,21,89%
TH02-FIT-40,"Townhouse 2 — MEP, fit-out & finishes",KB.10.4,91,21-Apr-27,20-Jul-27,21,11%
TH02-HO-50,"Townhouse 2 — testing, commissioning & handover",KB.10.5,20,21-Jul-27,09-Aug-27,21,0%
TH03-SUB-10,"Townhouse 3 — piling, excavation & raft",KB.11.1,31,12-Jan-27,11-Feb-27,22,100%
TH03-STR-20,"Townhouse 3 — superstructure L1–L3",KB.11.2,75,12-Feb-27,27-Apr-27,22,100%
TH03-FAC-30,"Townhouse 3 — cladding & glazing",KB.11.3,46,12-Apr-27,27-May-27,22,42%
TH03-FIT-40,"Townhouse 3 — MEP, fit-out & finishes",KB.11.4,91,12-May-27,10-Aug-27,22,0%
TH03-HO-50,"Townhouse 3 — testing, commissioning & handover",KB.11.5,20,11-Aug-27,30-Aug-27,22,0%
TH04-SUB-10,"Townhouse 4 — piling, excavation & raft",KB.12.1,31,02-Feb-27,04-Mar-27,23,100%
TH04-STR-20,"Townhouse 4 — superstructure L1–L3",KB.12.2,75,05-Mar-27,18-May-27,23,77%
TH04-FAC-30,"Townhouse 4 — cladding & glazing",KB.12.3,46,03-May-27,17-Jun-27,23,0%
TH04-FIT-40,"Townhouse 4 — MEP, fit-out & finishes",KB.12.4,91,02-Jun-27,31-Aug-27,23,0%
TH04-HO-50,"Townhouse 4 — testing, commissioning & handover",KB.12.5,20,01-Sep-27,20-Sep-27,23,0%
TH05-SUB-10,"Townhouse 5 — piling, excavation & raft",KB.13.1,31,23-Feb-27,25-Mar-27,24,100%
TH05-STR-20,"Townhouse 5 — superstructure L1–L3",KB.13.2,75,26-Mar-27,08-Jun-27,24,49%
TH05-FAC-30,"Townhouse 5 — cladding & glazing",KB.13.3,46,24-May-27,08-Jul-27,24,0%
TH05-FIT-40,"Townhouse 5 — MEP, fit-out & finishes",KB.13.4,91,23-Jun-27,21-Sep-27,24,0%
TH05-HO-50,"Townhouse 5 — testing, commissioning & handover",KB.13.5,20,22-Sep-27,11-Oct-27,24,0%
TH06-SUB-10,"Townhouse 6 — piling, excavation & raft",KB.14.1,31,16-Mar-27,15-Apr-27,25,100%
TH06-STR-20,"Townhouse 6 — superstructure L1–L3",KB.14.2,75,16-Apr-27,29-Jun-27,25,20%
TH06-FAC-30,"Townhouse 6 — cladding & glazing",KB.14.3,46,14-Jun-27,29-Jul-27,25,0%
TH06-FIT-40,"Townhouse 6 — MEP, fit-out & finishes",KB.14.4,91,14-Jul-27,12-Oct-27,25,0%
TH06-HO-50,"Townhouse 6 — testing, commissioning & handover",KB.14.5,20,13-Oct-27,01-Nov-27,25,0%
TH07-SUB-10,"Townhouse 7 — piling, excavation & raft",KB.15.1,31,06-Apr-27,06-May-27,26,83%
TH07-STR-20,"Townhouse 7 — superstructure L1–L3",KB.15.2,75,07-May-27,20-Jul-27,26,0%
TH07-FAC-30,"Townhouse 7 — cladding & glazing",KB.15.3,46,05-Jul-27,19-Aug-27,26,0%
TH07-FIT-40,"Townhouse 7 — MEP, fit-out & finishes",KB.15.4,91,04-Aug-27,02-Nov-27,26,0%
TH07-HO-50,"Townhouse 7 — testing, commissioning & handover",KB.15.5,20,03-Nov-27,22-Nov-27,26,0%
TH08-SUB-10,"Townhouse 8 — piling, excavation & raft",KB.16.1,31,27-Apr-27,27-May-27,27,13%
TH08-STR-20,"Townhouse 8 — superstructure L1–L3",KB.16.2,75,28-May-27,10-Aug-27,27,0%
TH08-FAC-30,"Townhouse 8 — cladding & glazing",KB.16.3,46,26-Jul-27,09-Sep-27,27,0%
TH08-FIT-40,"Townhouse 8 — MEP, fit-out & finishes",KB.16.4,91,25-Aug-27,23-Nov-27,27,0%
TH08-HO-50,"Townhouse 8 — testing, commissioning & handover",KB.16.5,20,24-Nov-27,13-Dec-27,27,0%
KB-IN-900,"External works & landscaping",KB.9,300,01-Jun-28,31-Mar-29,20,0%
KB-M-990,Practical completion,KB.9,0,30-Jun-29,30-Jun-29,0,0%
